# ПЗ1

Schedule from MS Project, 2025-09-15 to 2026-06-08, status date 2025-09-15, costs in ₽, A marks actual dates.

## Calendars

- Standard: Mon-Fri 08:00-12:00, 13:00-17:00; Sat-Sun off.

## Resources

| Resource | Rate | Cost per use |
| --- | --- | --- |
| Главбух | 5625 | 300000 |
| Администратор | 4375 | 400000 |
| Программист | 3750 | 500000 |
| Техник | 2500 |  |
| Бухгалтер мат. учета1 | 2500 |  |
| Бухгалтер мат. учета2 | 2500 |  |
| Бухгалтер учета ОС и НМА | 2500 |  |
| Бухгалтер учета ОС | 2500 |  |
| Бухгалтер учета реализации | 2500 |  |
| Бухгалтер производственного учета | 2500 |  |
| Компьютер | 1500000 |  |
| Сервер | 1500000 |  |
| Принтер | 150000 |  |
| МФУ | 170000 |  |
| Сетевой кабель |  | 150000 |
| Сетевой концентратор | 30000 |  |
| Панель |  | 100000 |
| Разъемы и розетки |  | 150000 |
| Бухгалтерская система |  | 1000000 |
| Офисный пакет |  | 700000 |
| ОС рабочей станции |  | 600000 |
| Серверная ОС |  | 300000 |
| Интернет |  |  |
| Междугородние переговоры |  |  |

## Schedule

| ID | WBS | Task | Type | Duration | Start | Finish | Predecessors | Complete | Remaining | Baseline start | Baseline finish | Baseline duration | Total slack | Free slack | Constraint | Resources | Work | Actual work | Cost | Baseline cost | Actual cost |
| --- | --- | --- | --- | --- | --- | --- | --- | --- | --- | --- | --- | --- | --- | --- | --- | --- | --- | --- | --- | --- | --- |
| 1 | 1 | Начало проекта | milestone | 0d | 2025-09-15 | 2025-09-15 |  |  |  | 2025-09-15 | 2025-09-15 | 0d | 190.53d |  |  |  |  |  |  |  |  |
| 2 | 2 | **Выбор системы** |  | 24d | 2025-09-15 A | 2025-10-16 |  | 75% | 6d | 2025-09-15 | 2025-10-16 | 24d | 153.03d | 0d |  |  | 211.2h | 135.2h | 2,963,000 | 2,963,000 | 1,865,500 |
| 3 | 2.1 | Изучение рынка бухгалтерских систем |  | 7d | 2025-09-15 A | 2025-09-23 A | 1 | 100% |  | 2025-09-15 | 2025-09-23 | 7d |  |  |  | Администратор; Интернет [2.7%] | 56h | 56h | 660,000 | 660,000 | 645,000 |
| 4 | 2.2 | Составление требований к бухгалтерским сис |  | 14d | 2025-09-15 A | 2025-10-02 A | 1 | 100% |  | 2025-09-15 | 2025-10-02 | 14d |  |  |  | Администратор; Главбух [20%] | 67.2h | 67.2h | 768,000 | 768,000 | 768,000 |
| 5 | 2.3 | Консультации с фирмами-разработчиками |  | 7d | 2025-10-03 A | 2025-10-14 | 3, 4 | 21% | 5.5d | 2025-10-03 | 2025-10-14 | 7d | 153.03d | 0d |  | Администратор; Междугородние переговоры [3.6%]; Интернет [1.6%] | 56h | 12h | 675,000 | 675,000 | 452,500 |
| 6 | 2.4 | Принятие окончательного решения |  | 2d | 2025-10-15 | 2025-10-16 | 5 |  |  | 2025-10-15 | 2025-10-16 | 2d | 1.2d | 0d |  | Администратор; Главбух | 32h |  | 860,000 | 860,000 |  |
| 7 | 2.5 | Выбор завершен | milestone | 0d | 2025-10-16 | 2025-10-16 | 6 |  |  | 2025-10-16 | 2025-10-16 | 0d | 1.2d | 0d |  |  |  |  |  |  |  |
| 8 | 3 | **Приобретение программного обеспечения** |  | 23.8d | 2025-10-17 A | 2025-11-19 |  | 43% | 13.49d | 2025-10-17 | 2025-11-19 | 23.8d | 142.73d |  |  |  | 156.8h | 120h | 5,854,500 | 5,854,500 | 3,075,000 |
| 9 | 3.1 | Заключение договоров |  | 10d | 2025-10-17 A | 2025-11-05 | 2 | 65% | 3.5d | 2025-10-17 | 2025-11-05 | 10d | 142.73d | 0d |  | Администратор [200%]; Программист; Главбух [400%] | 148h | 120h | 3,197,500 | 3,197,500 | 3,075,000 |
| 10 | 3.2 | Оплата за ПО |  | 2d | 2025-11-05 | 2025-11-07 | 9 |  |  | 2025-11-05 | 2025-11-07 | 2d | 142.73d | 0d |  | Главбух [10%]; Бухгалтерская система; Офисный пакет; ОС рабочей станции; Серверная ОС | 1.6h |  | 2,639,000 | 2,639,000 |  |
| 11 | 3.3 | Оформление ПО на баланс |  | 3d | 2025-11-14 | 2025-11-19 | 10FS+5d |  |  | 2025-11-14 | 2025-11-19 | 3d | 142.73d | 0d |  | Бухгалтер учета ОС и НМА [30%] | 7.2h |  | 18,000 | 18,000 |  |
| 12 | 3.4 | Приобретение ПО завершено | milestone | 0d | 2025-11-19 | 2025-11-19 | 11 |  |  | 2025-11-19 | 2025-11-19 | 0d | 142.73d |  |  |  |  |  |  |  |  |
| 13 | 4 | **Приобретение компьютеров и сетевого оборудования** |  | 37.8d | 2025-10-17 A | 2025-12-09 |  | 35% | 24.57d | 2025-10-17 | 2025-12-09 | 37.8d | 1.2d |  |  |  | 148.8h | 40.21h | 22,365,500 | 22,365,500 | 437,170 |
| 14 | 4.1 | Сбор информации о поставщиках и предложениях |  | 9.8d | 2025-10-17 A | 2025-10-30 A | 7 | 100% |  | 2025-10-17 | 2025-10-30 | 9.8d |  |  |  | Администратор [50%]; Интернет [1.3%]; Междугородние переговоры [1.9%] | 39.2h | 39.2h | 396,500 | 396,500 | 371,500 |
| 15 | 4.2 | Анализ и выбор поставщика |  | 10d | 2025-10-30 A | 2025-11-14 | 14 | 6% | 9.37d | 2025-10-30 | 2025-11-14 | 10d | 1.2d | 0d |  | Администратор [50%]; Главбух [20%]; Интернет [2.5%] | 28h | 1.01h | 402,500 | 402,500 | 65,670 |
| 16 | 4.3 | Заключение договоров |  | 5d | 2025-11-14 | 2025-11-21 | 15 |  |  | 2025-11-14 | 2025-11-21 | 5d | 1.2d | 0d |  | Администратор; Главбух [50%] | 60h |  | 837,500 | 837,500 |  |
| 17 | 4.4 | Оплата за оборудование |  | 2d | 2025-11-21 | 2025-11-25 | 16 |  |  | 2025-11-21 | 2025-11-25 | 2d | 1.2d | 0d |  | Главбух [30%]; Компьютер [1200%]; Сервер; Принтер [200%]; МФУ [200%]; Сетевой кабель [2000%]; Сетевой концентратор; Панель [500%]; Разъемы и розетки [1000%] | 4.8h |  | 20,687,000 | 20,687,000 |  |
| 18 | 4.5 | Оформление оборудования на баланс |  | 3d | 2025-12-04 | 2025-12-09 | 17FS+7d |  |  | 2025-12-04 | 2025-12-09 | 3d | 1.2d | 0d |  | Бухгалтер учета ОС [70%] | 16.8h |  | 42,000 | 42,000 |  |
| 19 | 4.6 | Приобретение оборудования завершено | milestone | 0d | 2025-12-09 | 2025-12-09 | 18 |  |  | 2025-12-09 | 2025-12-09 | 0d | 1.2d | 0d |  |  |  |  |  |  |  |
| 20 | 5 | **Монтаж локальной сети** |  | 45.73d | 2025-12-09 | 2026-02-11 |  |  |  | 2025-12-09 | 2026-02-11 | 45.73d | 0d |  |  |  | 15893.7h |  | 39,734,233.33 | 39,734,233.33 |  |
| 21 | 5.1 | Установка компьютеров на рабочих местах |  | 6d | 2025-12-09 | 2025-12-17 | 19 |  |  | 2025-12-09 | 2025-12-17 | 6d | 29.73d |  |  | Техник [350%] | 51.2h |  | 128,000 | 128,000 |  |
| 22 | 5.2 | Монтаж кабеля |  | 17.27d | 2025-12-09 | 2026-01-05 | 19 |  |  | 2025-12-09 | 2026-01-05 | 17.27d | 16.67d |  |  | Техник [200%] | 104.49h |  | 261,233.33 | 261,233.33 |  |
| 23 | 5.3 | Монтаж сетевых устройств |  | 19.67d | 2025-12-11 | 2026-01-28 | 19 |  |  | 2025-12-11 | 2026-01-28 | 19.67d | 0d |  | start no earlier than 2025-12-11 | Техник [353525%] | 15698h |  | 39,245,000 | 39,245,000 |  |
| 24 | 5.4 | Подключение кабеля к компьютерам и сете |  | 10d | 2026-01-28 | 2026-02-11 | 21, 22, 23 |  |  | 2026-01-28 | 2026-02-11 | 10d | 0d |  |  | Техник | 40h |  | 100,000 | 100,000 |  |
| 25 | 5.5 | Монтаж завершен | milestone | 0d | 2026-02-11 | 2026-02-11 | 24 |  |  | 2026-02-11 | 2026-02-11 | 0d | 0d |  |  |  |  |  |  |  |  |

| ID | WBS | Task | Type | Duration | Start | Finish | Predecessors | Baseline start | Baseline finish | Baseline duration | Total slack | Resources | Work | Cost | Baseline cost |
| --- | --- | --- | --- | --- | --- | --- | --- | --- | --- | --- | --- | --- | --- | --- | --- |
| 26 | 6 | **Установка ПО на компьютеры** |  | 17d | 2026-02-11 | 2026-03-06 |  | 2026-02-11 | 2026-03-06 | 17d | 0d |  | 176h | 2,445,000 | 2,445,000 |
| 27 | 6.1 | Установка сервера |  | 5d | 2026-02-11 | 2026-02-18 | 25 | 2026-02-11 | 2026-02-18 | 5d | 0d | Администратор | 40h | 575,000 | 575,000 |
| 28 | 6.2 | Создание доменов и пользователей |  | 7d | 2026-02-18 | 2026-02-27 | 27 | 2026-02-18 | 2026-02-27 | 7d | 0d | Администратор | 56h | 645,000 | 645,000 |
| 29 | 6.3 | Проверка и настройка работы сети |  | 5d | 2026-02-27 | 2026-03-06 | 28 | 2026-02-27 | 2026-03-06 | 5d | 0d | Администратор; Программист | 80h | 1,225,000 | 1,225,000 |
| 30 | 6.4 | Настройка сети завершена | milestone | 0d | 2026-03-06 | 2026-03-06 | 29 | 2026-03-06 | 2026-03-06 | 0d | 0d |  |  |  |  |
| 31 | 7 | **Обучение персонала** |  | 58d | 2026-03-06 | 2026-05-27 |  | 2026-03-06 | 2026-05-27 | 58d | 0d |  | 1856h | 7,212,500 | 7,212,500 |
| 32 | 7.1 | Принципы работы системы |  | 3d | 2026-03-06 | 2026-03-11 | 30 | 2026-03-06 | 2026-03-11 | 3d | 0d | Администратор [50%]; Главбух [50%]; Бухгалтер мат. учета1 [50%]; Бухгалтер мат. учета2 [50%]; Бухгалтер учета ОС и НМА [50%]; Бухгалтер учета ОС [50%]; Бухгалтер учета реализации [50%]; Бухгалтер производственного учета [50%] | 96h | 650,000 | 650,000 |
| 33 | 7.2 | Изучение интерфейса |  | 5d | 2026-03-11 | 2026-03-18 | 32 | 2026-03-11 | 2026-03-18 | 5d | 0d | Главбух [50%]; Бухгалтер мат. учета1 [50%]; Бухгалтер мат. учета2 [50%]; Бухгалтер учета ОС и НМА [50%]; Бухгалтер учета ОС [50%]; Бухгалтер учета реализации [50%]; Бухгалтер производственного учета [50%]; Программист [50%] | 160h | 887,500 | 887,500 |
| 34 | 7.3 | Изучение справочников |  | 20d | 2026-03-18 | 2026-04-15 | 33 | 2026-03-18 | 2026-04-15 | 20d | 0d | Программист [50%]; Главбух [50%]; Бухгалтер мат. учета1 [50%]; Бухгалтер мат. учета2 [50%]; Бухгалтер учета ОС и НМА [50%]; Бухгалтер учета ОС [50%]; Бухгалтер учета реализации [50%]; Бухгалтер производственного учета [50%] | 640h | 2,350,000 | 2,350,000 |
| 35 | 7.4 | Изучение документов и журналов |  | 30d | 2026-04-15 | 2026-05-27 | 34 | 2026-04-15 | 2026-05-27 | 30d | 0d | Программист [50%]; Главбух [50%]; Бухгалтер мат. учета1 [50%]; Бухгалтер мат. учета2 [50%]; Бухгалтер учета ОС и НМА [50%]; Бухгалтер учета ОС [50%]; Бухгалтер учета реализации [50%]; Бухгалтер производственного учета [50%] | 960h | 3,325,000 | 3,325,000 |
| 36 | 7.5 | Обучение завершено | milestone | 0d | 2026-05-27 | 2026-05-27 | 35 | 2026-05-27 | 2026-05-27 | 0d | 0d |  |  |  |  |
| 37 | 8 | **Передача в эксплуатацию** |  | 8d | 2026-05-27 | 2026-06-08 |  | 2026-05-27 | 2026-06-08 | 8d | 0d |  | 144h | 2,220,000 | 2,220,000 |
| 38 | 8.1 | Формирование тестовой отчетности |  | 5d | 2026-05-27 | 2026-06-03 | 36 | 2026-05-27 | 2026-06-03 | 5d | 0d | Администратор; Программист; Главбух | 120h | 1,750,000 | 1,750,000 |
| 39 | 8.2 | Акт ввода в эксплуатацию |  | 3d | 2026-06-03 | 2026-06-08 | 38 | 2026-06-03 | 2026-06-08 | 3d | 0d | Администратор [50%]; Главбух [50%] | 24h | 470,000 | 470,000 |
| 40 | 8.3 | Передача в эксплуатацию завершена | milestone | 0d | 2026-06-08 | 2026-06-08 | 39 | 2026-06-08 | 2026-06-08 | 0d | 0d |  |  |  |  |
| 41 | 9 | Конец проекта | milestone | 0d | 2026-06-08 | 2026-06-08 | 40 | 2026-06-08 | 2026-06-08 | 0d | 0d |  |  |  |  |
