# Замена

Schedule from MS Project, 2011-02-01 to 2011-04-06, costs in Br.

## Calendars

- Вторник: Mon 09:00-13:00, 14:00-18:00; Tue off; Wed-Fri 09:00-13:00, 14:00-18:00; Sat 08:00-12:00, 13:00-17:00; Sun 08:00-12:00, 13:00-14:00.

## Resources

| Resource | Rate | Cost per use |
| --- | --- | --- |
| Слесарь-водопроводчик | 1250 | 20000 |
| Штукатур | 1000 |  |
| Подсобник | 500 |  |
| Плиточник | 1875 |  |
| Плотник | 1875 |  |
| АО "Светлый потолок" | 1250 |  |
| Унитаз-компакт | 150000 |  |
| Ванна | 350000 |  |
| Раковина | 250000 |  |
| Смеситель с душем | 100000 |  |
| Плитка | 10000 |  |
| Панель | 5000 |  |
| Обои | 15000 |  |
| Навесной потолок |  | 700000 |
| Паркет | 15000 |  |
| Доставка |  |  |

## Schedule

| ID | WBS | Task | Type | Duration | Start | Finish | Predecessors | Total slack | Free slack | Resources | Work | Cost |
| --- | --- | --- | --- | --- | --- | --- | --- | --- | --- | --- | --- | --- |
| 1 | 1 | Начало проекта | milestone | 0d | 2011-02-01 | 2011-02-01 |  | 0d |  |  |  |  |
| 2 | 2 | **Выравнивание стен** |  | 15d | 2011-02-02 | 2011-02-19 |  | 7d |  |  | 120h | 120,000 |
| 3 | 2.1 | Стены в спальне |  | 4d | 2011-02-02 | 2011-02-05 | 1 | 7d | 0d | Штукатур | 32h | 32,000 |
| 4 | 2.2 | Стены в гостиной |  | 4d | 2011-02-06 | 2011-02-11 | 3 | 7d | 0d | Штукатур | 32h | 32,000 |
| 5 | 2.3 | Стены в кухне |  | 3d | 2011-02-11 | 2011-02-14 | 4 | 7d | 0d | Штукатур | 24h | 24,000 |
| 6 | 2.4 | Стены в прихожей |  | 4d | 2011-02-14 | 2011-02-19 | 5 | 7d | 0d | Штукатур | 32h | 32,000 |
| 7 | 2.5 | Выравнивание стен завершено | milestone | 0d | 2011-02-19 | 2011-02-19 | 6 | 7d | 0d |  |  |  |
| 8 | 3 | **Санузел** |  | 20d | 2011-02-02 | 2011-02-26 |  | 1.62d |  |  | 104h | 480,000 |
| 9 | 3.1 | Снятие штукатурки в санузле |  | 3d | 2011-02-02 | 2011-02-04 | 1 | 1.62d | 0d | Подсобник | 24h | 12,000 |
| 10 | 3.2 | Отделка стен санузла |  | 4d | 2011-02-05 | 2011-02-10 | 9 | 1.62d | 0d | Плиточник; Плитка [1000%] | 32h | 160,000 |
| 11 | 3.3 | Отделка потолка санузла |  | 3d | 2011-02-16 | 2011-02-19 | 10 | 1.5d | 0d | Плиточник; Панель [500%] | 24h | 70,000 |
| 12 | 3.4 | Отделка пола санузла |  | 2d | 2011-02-23 | 2011-02-25 | 11 | 2d | 0d | Плиточник; Плитка [500%] | 16h | 80,000 |
| 13 | 3.5 | Установка сантехнического оборудования |  | 1d | 2011-02-25 | 2011-02-26 | 12 | 2d | 0d | Унитаз-компакт; Штукатур | 8h | 158,000 |
| 14 | 3.6 | Ремонт санузла завершён | milestone | 0d | 2011-02-26 | 2011-02-26 | 13 | 2d |  |  |  |  |
| 15 | 4 | **Ванная** |  | 19d | 2011-02-05 | 2011-02-28 |  | 0d |  |  | 104h | 1,067,000 |
| 16 | 4.1 | Снятие штукатурки в ванной |  | 3d | 2011-02-05 | 2011-02-09 | 1 | 0d |  | Подсобник | 24h | 12,000 |
| 17 | 4.2 | Отделка стен ванной |  | 5d | 2011-02-10 | 2011-02-16 | 16 | 0d |  | Плиточник; Плитка [1000%] | 40h | 175,000 |
| 18 | 4.3 | Отделка потолка ванной |  | 2d | 2011-02-19 | 2011-02-23 | 17 | 0d |  | Плиточник; Панель [600%] | 16h | 60,000 |
| 19 | 4.4 | Отделка пола ванной |  | 2d | 2011-02-25 | 2011-02-27 | 18 | 0d |  | Плиточник; Плитка [600%] | 16h | 90,000 |
| 20 | 4.5 | Установка сантехники |  | 1d | 2011-02-27 | 2011-02-28 | 19 | 0d |  | Слесарь-водопроводчик; Ванна; Раковина; Смеситель с душем | 8h | 730,000 |
| 21 | 4.6 | Ремонт ванной завершён | milestone | 0d | 2011-02-28 | 2011-02-28 | 20 | 0d |  |  |  |  |
| 22 | 5 | **Отделка стен** |  | 17d | 2011-02-28 | 2011-03-21 |  | 0d |  |  | 176h | 551,000 |
| 23 | 5.1 | Отделка стен в спальне |  | 5d | 2011-02-28 | 2011-03-06 | 7, 14, 21 | 0d |  | Штукатур; Обои [800%] | 40h | 160,000 |
| 24 | 5.2 | Отделка стен в гостиной |  | 7d | 2011-03-06 | 2011-03-16 | 23 | 0d |  | Штукатур; Обои [800%] | 56h | 176,000 |
| 25 | 5.3 | Отделка стен в кухне |  | 5d | 2011-03-16 | 2011-03-21 | 24 | 0d |  | Штукатур; Плиточник; Плитка [500%]; Панель [1000%] | 80h | 215,000 |
| 26 | 5.4 | Отделка стен в прихожей | milestone | 0d | 2011-03-21 | 2011-03-21 | 25 | 4d | 0d | Штукатур; Плиточник; Панель |  |  |
| 27 | 5.5 | Отделка стен завершена | milestone | 0d | 2011-03-21 | 2011-03-21 | 26 | 12d |  |  |  |  |

| ID | WBS | Task | Type | Duration | Start | Finish | Predecessors | Total slack | Free slack | Resources | Work | Cost |
| --- | --- | --- | --- | --- | --- | --- | --- | --- | --- | --- | --- | --- |
| 28 | 6 | **Потолки** |  | 26d | 2011-02-19 | 2011-03-24 |  | 10d |  |  | 80h | 840,000 |
| 29 | 6.1 | Замер |  | 2d | 2011-02-19 | 2011-02-23 | 7 | 14d | 0d | АО "Светлый потолок" | 16h | 20,000 |
| 30 | 6.2 | Заказ и оплата потолков |  | 2d | 2011-02-23 | 2011-02-25 | 29 | 14d | 0d | Навесной потолок |  | 700,000 |
| 31 | 6.3 | Навесной потолок в спальне |  | 2d | 2011-03-09 | 2011-03-11 | 23, 30FS+10d | 14d | 0d | АО "Светлый потолок" | 16h | 20,000 |
| 32 | 6.4 | Навесной потолок в гостиной |  | 2d | 2011-03-16 | 2011-03-18 | 24, 30FS+10d | 9d | 0d | АО "Светлый потолок" | 16h | 20,000 |
| 33 | 6.5 | Навесной потолок в кухне |  | 2d | 2011-03-21 | 2011-03-24 | 25, 30 | 0d |  | Плиточник; Панель [600%] | 16h | 60,000 |
| 34 | 6.6 | Панельный потолок в прихожей |  | 2d | 2011-03-21 | 2011-03-24 | 26, 30FS+10d | 4d | 0d | АО "Светлый потолок" | 16h | 20,000 |
| 35 | 6.7 | Монтаж потолков завершён | milestone | 0d | 2011-03-24 | 2011-03-24 | 31, 32, 33, 34 | 10d |  |  |  |  |
| 36 | 7 | **Полы** |  | 20d | 2011-03-11 | 2011-04-06 |  | 0d |  |  | 160h | 1,275,000 |
| 37 | 7.1 | Отделка полов в спальне |  | 6d | 2011-03-11 | 2011-03-19 | 31 | 14d |  | Плотник; Паркет [2000%] | 48h | 390,000 |
| 38 | 7.2 | Отделака полов в гостиной |  | 6d | 2011-03-19 | 2011-03-26 | 32 | 8d |  | Плотник; Паркет [2000%] | 48h | 390,000 |
| 39 | 7.3 | Отделка полов в кухне |  | 3d | 2011-04-02 | 2011-04-06 | 33 | 0d |  | Плотник; Паркет [1000%] | 24h | 195,000 |
| 40 | 7.4 | Отделка полов в прихожей |  | 5d | 2011-03-26 | 2011-04-01 | 34 | 3d |  | Плотник; Паркет [1500%] | 40h | 300,000 |
| 41 | 7.5 | Отделка полов завершена | milestone | 0d | 2011-04-06 | 2011-04-06 | 37, 38, 39, 40 | 0d |  |  |  |  |
| 42 | 8 | Конец проекта | milestone | 0d | 2011-04-06 | 2011-04-06 | 41 | 0d |  |  |  |  |
