# РесурсыРазногоВида

Schedule from MS Project, 2011-02-01 to 2011-10-19, costs in ₽.

## Calendars

- Стандартный: Mon-Fri 09:00-13:00, 14:00-18:00; Sat-Sun off.

## Resources

| Resource | Unit | Rate | Cost per use |
| --- | --- | --- | --- |
| Слесарь-водопроводчик |  | 1250 | 20000 |
| Штукатур |  | 1000 |  |
| Подсобник |  | 500 |  |
| Плиточник |  | 1875 |  |
| Плотник |  | 1875 |  |
| АО "Светлый потолок" |  | 1250 |  |
| Унитаз-компакт | шт | 150000 |  |
| Ванна | шт | 350000 |  |
| Раковина | шт | 250000 |  |
| Сместитель с душем | шт | 100000 |  |
| Плитка | м2 | 10000 |  |
| Панель | шт | 5000 |  |
| Обои | рул | 15000 |  |
| Навесной потолок |  |  | 700000 |
| Паркет | м2 | 15000 |  |
| Доставка |  |  |  |

## Schedule

| ID | WBS | Task | Type | Duration | Start | Finish | Predecessors | Total slack | Free slack | Resources | Work | Cost |
| --- | --- | --- | --- | --- | --- | --- | --- | --- | --- | --- | --- | --- |
| 1 | 1 | Начало проекта | milestone | 0d | 2011-02-01 | 2011-02-01 |  | 0d |  |  |  |  |
| 2 | 2 | **Выравнивание стен** |  | 28d | 2011-02-01 | 2011-03-10 |  | 131d |  |  | 136h | 136,000 |
| 3 | 2.1 | Стены в спальне |  | 4d | 2011-02-01 | 2011-02-04 | 1 | 131d | 0d | Штукатур | 32h | 32,000 |
| 4 | 2.2 | Стены в гостиной |  | 6d | 2011-02-07 | 2011-03-01 | 3 | 131d | 0d | Штукатур | 48h | 48,000 |
| 5 | 2.3 | Стены в кухне |  | 3d | 2011-03-02 | 2011-03-04 | 4 | 131d | 0d | Штукатур | 24h | 24,000 |
| 6 | 2.4 | Стены в прихожей |  | 4d | 2011-03-07 | 2011-03-10 | 5 | 131d | 0d | Штукатур | 32h | 32,000 |
| 7 | 2.5 | Выравнивание стен завершено | milestone | 0d | 2011-03-10 | 2011-03-10 | 6 | 131d | 0d |  |  |  |
| 8 | 3 | **Санузел** |  | 159d | 2011-02-01 | 2011-09-09 |  | 0d |  |  | 104h | 497,000 |
| 9 | 3.1 | Снятие штукатурки в санузле |  | 3d | 2011-02-01 | 2011-02-03 | 1 | 0d |  | Подсобник | 24h | 12,000 |
| 10 | 3.2 | Отделка стен санузла |  | 4d | 2011-02-04 | 2011-02-09 | 9 | 0d |  | Плиточник; Плитка [10 м2] | 32h | 160,000 |
| 11 | 3.3 | Отделка потолка санузла |  | 2d | 2011-02-10 | 2011-02-11 | 10 | 0d |  | Плиточник; Панель [5 шт] | 16h | 55,000 |
| 12 | 3.4 | Отделка пола санузла |  | 2d | 2011-02-14 | 2011-02-15 | 11 | 0d |  | Плиточник; Плитка [5 м2] | 16h | 80,000 |
| 13 | 3.5 | Установка сантехнического оборудования |  | 2d | 2011-02-16 | 2011-09-09 | 12 | 0d |  | Слесарь-водопроводчик; Унитаз-компакт [1 шт] | 16h | 190,000 |
| 14 | 3.6 | Ремонт санузла завершен | milestone | 0d | 2011-09-09 | 2011-09-09 | 13 | 0d |  |  |  |  |
| 15 | 4 | **Ванная** |  | 18d | 2011-02-04 | 2011-03-01 |  | 138d |  |  | 104h | 1,067,000 |
| 16 | 4.1 | Снятие штукатурки в ванной |  | 3d | 2011-02-04 | 2011-02-08 | 1 | 138d | 0d | Подсобник | 24h | 12,000 |
| 17 | 4.2 | Отделка стен ванной |  | 5d | 2011-02-16 | 2011-02-22 | 16 | 138d | 0d | Плиточник; Плитка [10 м2] | 40h | 175,000 |
| 18 | 4.3 | Отделка потолка ванной |  | 2d | 2011-02-23 | 2011-02-24 | 17 | 138d | 0d | Плиточник; Панель [6 шт] | 16h | 60,000 |
| 19 | 4.4 | Отделка пола ванной |  | 2d | 2011-02-25 | 2011-02-28 | 18 | 138d | 0d | Плиточник; Плитка [6 м2] | 16h | 90,000 |
| 20 | 4.5 | Установка сантехники |  | 1d | 2011-03-01 | 2011-03-01 | 19 | 138d | 0d | Слесарь-водопроводчик; Ванна [1 шт]; Сместитель с душем [1 шт]; Раковина [1 шт] | 8h | 730,000 |
| 21 | 4.6 | Ремонт ванной завершен | milestone | 0d | 2011-03-01 | 2011-03-01 | 20 | 138d |  |  |  |  |
| 22 | 5 | **Отделка стен** |  | 15.5d | 2011-09-12 | 2011-10-03 |  | 0d |  |  | 136h | 568,500 |
| 23 | 5.1 | Отделка стен в спальне |  | 5d | 2011-09-12 | 2011-09-16 | 7, 14, 21 | 0d |  | Штукатур; Обои [8 рул] | 40h | 160,000 |
| 24 | 5.2 | Отделка стен в гостиной |  | 7d | 2011-09-19 | 2011-09-27 | 23 | 0d |  | Штукатур; Обои [8 рул] | 56h | 176,000 |
| 25 | 5.3 | Отделка стен в кухне |  | 2.5d | 2011-09-28 | 2011-09-30 | 24 | 0d |  | Штукатур; Плиточник; Плитка [5 м2]; Панель [10 шт] | 40h | 157,500 |
| 26 | 5.4 | Отделка стен в прихожей | milestone | 0d | 2011-09-30 | 2011-10-03 | 25 | 2.5d | 0d | Штукатур; Плиточник [150%]; Панель [15 шт] |  | 75,000 |
| 27 | 5.5 | Отделка стен завершена | milestone | 0d | 2011-10-03 | 2011-10-03 | 26 | 12.5d |  |  |  |  |

| ID | WBS | Task | Type | Duration | Start | Finish | Predecessors | Total slack | Free slack | Resources | Work | Cost |
| --- | --- | --- | --- | --- | --- | --- | --- | --- | --- | --- | --- | --- |
| 28 | 6 | **Потолки** |  | 148.5d | 2011-03-11 | 2011-10-05 |  | 10.5d |  |  | 80h | 840,000 |
| 29 | 6.1 | Замер |  | 2d | 2011-03-11 | 2011-03-14 | 7 | 135d | 0d | АО "Светлый потолок" | 16h | 20,000 |
| 30 | 6.2 | Заказ и оплата потолков |  | 2d | 2011-03-15 | 2011-03-16 | 29 | 135d | 122d | Навесной потолок |  | 700,000 |
| 31 | 6.3 | Навесной потолок в спальне |  | 2d | 2011-09-19 | 2011-09-20 | 23, 30FS+10d | 15d | 0d | АО "Светлый потолок" | 16h | 20,000 |
| 32 | 6.4 | Навесной потолок в гостиной |  | 2d | 2011-09-28 | 2011-09-29 | 24, 30FS+10d | 8d | 0d | АО "Светлый потолок" | 16h | 20,000 |
| 33 | 6.5 | Панельный потолок в кухне |  | 2d | 2011-09-30 | 2011-10-04 | 25, 30 | 0d |  | Плиточник; Панель [6 шт] | 16h | 60,000 |
| 34 | 6.6 | Навесной потолок в прихожей |  | 2d | 2011-10-03 | 2011-10-05 | 26, 30FS+10d | 2.5d | 0d | АО "Светлый потолок" | 16h | 20,000 |
| 35 | 6.7 | Монтаж потолков завершен | milestone | 0d | 2011-10-05 | 2011-10-05 | 31, 32, 33, 34 | 10.5d |  |  |  |  |
| 36 | 7 | **Полы** |  | 21d | 2011-09-21 | 2011-10-19 |  | 0d |  |  | 160h | 1,275,000 |
| 37 | 7.1 | Отделка полов в спальне |  | 6d | 2011-09-21 | 2011-09-28 | 31 | 15d |  | Паркет [20 м2]; Плотник | 48h | 390,000 |
| 38 | 7.2 | Отделка полов в гостиной |  | 6d | 2011-09-30 | 2011-10-07 | 32 | 8d |  | Паркет [20 м2]; Плотник | 48h | 390,000 |
| 39 | 7.3 | Отделка полов в кухне |  | 3d | 2011-10-17 | 2011-10-19 | 33 | 0d |  | Паркет [10 м2]; Плотник | 24h | 195,000 |
| 40 | 7.4 | Отделка полов в прихожей |  | 5d | 2011-10-10 | 2011-10-14 | 34 | 3d |  | Паркет [15 м2]; Плотник | 40h | 300,000 |
| 41 | 7.5 | Отделка полов завершена | milestone | 0d | 2011-10-19 | 2011-10-19 | 37, 38, 39, 40 | 0d |  |  |  |  |
| 42 | 8 | Конец проекта | milestone | 0d | 2011-10-19 | 2011-10-19 | 41 | 0d |  |  |  |  |
